# POC项目

Schedule from a web Gantt chart, 2024-09-25 to 2025-02-14.
Saturdays and Sundays are off

## Schedule

| ID | WBS | Task | Duration | Start | Finish | Predecessors | inPeople | Status |
| --- | --- | --- | --- | --- | --- | --- | --- | --- |
| 2 | 1 | SOR确认 | 4d | 2024-09-25 | 2024-09-30 |  | HMCT&Alpine&ArcSoft |  |
| 3 | 2 | 开发文档交付 | 18d | 2024-10-01 | 2024-10-24 | 2 | ArcSoft | waiting |
| 4 | 3 | UE确认 | 1d | 2024-10-01 | 2024-10-01 |  |  |  |
| 5 | 4 | 开发环境提供 | 23d | 2024-09-25 | 2024-10-25 |  | Alpine |  |
| 6 | 5 | 整车环境提供 | 23d | 2024-09-25 | 2024-10-25 |  | HMCT |  |
| 7 | 6 | 8255平台移植 | 15d | 2024-10-28 | 2024-11-15 | 5 | Alpine&ArcSoft | waiting |
| 8 | 7 | 感知算法调优 | 20d | 2024-11-18 | 2024-12-13 | 7 | ArcSoft | waiting |
| 9 | 8 | 台架联合调试 | 20d | 2024-11-18 | 2024-12-13 | 7 | Alpine&ArcSoft | waiting |
| 10 | 9 | 实车联合调试 | 13d | 2024-12-16 | 2025-01-01 | 9 | Alpine&ArcSoft | waiting |
| 11 | 10 | β版本交付 | 12d | 2025-01-02 | 2025-01-17 | 10 | ArcSoft | waiting |
| 12 | 11 | 实车效果调优 | 10d | 2025-01-20 | 2025-01-31 | 11 | ArcSoft | waiting |
| 13 | 12 | Final版本交付 | 5d | 2025-02-03 | 2025-02-07 | 12 | ArcSoft | waiting |
| 14 | 13 | 版本验收 | 5d | 2025-02-10 | 2025-02-14 | 13 | HMCT&Alpine&ArcSoft | waiting |

Notes:
- 2: 项目方确认的SOR/项目计划表
- 3: 方案设计说明、API文档、项目开发计划，接口沟通
- 5: 样件板、摄像头样件、摄像头取流工具和编译工具
- 6: 1辆目标实车（运至杭州，需要有临牌和商业保险）
- 7: 示例程序、α版SDK、测试报告（α版本用于集成调试）
- 8: 精度测试报告
- 9: 上车前的联调
- 10: 具备目标功能的实车
- 11: 功能说明文档、示例程序、β版SDK、测试报告
- 12: 目标功能优化的实车
- 13: 功能说明文档、示例程序、Final版SDK、测试报告
- 14: 验收报告
